# Calendarizacion

Schedule from MS Project, 2014-05-02 to 2015-07-27, A marks actual dates.
ENCO S.A.

## Calendars

- Estándar: Mon-Sat 08:00-12:00; Sun off.
- ENTROPY 4HS POR DIA: Mon-Sat 08:00-12:00; Sun off.
- ENTROPY 6HS POR DIA: Mon-Sat 08:00-14:00; Sun off.

## Resources

| Resource |
| --- |
| JOSE |
| MATIAS |
| LUCAS |
| GASTON |
| DENISE |

## Schedule

| ID | WBS | Task | Type | Duration | Start | Finish | Predecessors | Complete | Remaining | Calendar |
| --- | --- | --- | --- | --- | --- | --- | --- | --- | --- | --- |
| 1 | 1 | **ENTROPY** |  | 0.5d | 2014-05-02 A | 2014-05-03 |  | 6% | 0.47d |  |
| 2 | 1.1 | **Sprint 0** |  | 80h | 2014-05-02 A | 2014-05-26 |  | 58% | 33.5h | ENTROPY 4HS POR DIA |
| 3 | 1.1.1 | Sprint planning | manual | 2h | 2014-05-05 A | 2014-05-05 A | 9 | 100% |  | ENTROPY 4HS POR DIA |
| 4 | 1.1.2 | Realizar plan de configuración | manual | 12h | 2014-05-08 A | 2014-05-12 |  | 80% | 2.4h | ENTROPY 4HS POR DIA |
| 5 | 1.1.3 | Armar repositorio | manual | 6h | 2014-05-13 A | 2014-05-14 | 4 | 90% | 0.6h | ENTROPY 4HS POR DIA |
| 6 | 1.1.4 | Construir entorno de desarrollo | manual | 4h | 2014-05-21 A | 2014-05-22 | 5 |  | 4h | ENTROPY 4HS POR DIA |
| 7 | 1.1.5 | Realizar plan de riesgo | manual | 8h | 2014-05-06 A | 2014-05-08 |  | 80% | 1.6h | ENTROPY 4HS POR DIA |
| 8 | 1.1.6 | Realizar plan de pruebas | manual | 12h | 2014-05-12 A | 2014-05-15 |  | 50% | 6h | ENTROPY 4HS POR DIA |
| 9 | 1.1.7 | Calendarizar proyecto | manual | 8h | 2014-05-02 A | 2014-05-05 A |  | 100% |  | ENTROPY 4HS POR DIA |
| 10 | 1.1.8 | Preparar Primera Exposición | manual | 12h | 2014-05-16 A | 2014-05-20 A |  | 100% |  | ENTROPY 4HS POR DIA |
| 11 | 1.1.9 | Realizar matriz de trazabilidad | manual | 4h | 2014-05-22 | 2014-05-23 |  |  |  | ENTROPY 4HS POR DIA |
| 12 | 1.1.10 | Realizar product backlog | manual | 8h | 2014-05-15 A | 2014-05-17 |  | 80% | 1.6h | ENTROPY 4HS POR DIA |
| 13 | 1.1.11 | Generar artefactos del producto | manual | 16h | 2014-05-20 A | 2014-05-24 | 12 |  | 16h | ENTROPY 4HS POR DIA |
| 14 | 1.1.12 | Realizar sprint retrospective | manual | 4h | 2014-05-24 A | 2014-05-26 |  |  | 4h | ENTROPY 4HS POR DIA |
| 15 | 1.2 | **Sprint 1** |  | 72h | 2014-05-26 | 2014-06-16 |  |  |  | ENTROPY 4HS POR DIA |
| 16 | 1.2.1 | Sprint planning | manual | 2h | 2014-05-26 | 2014-05-26 |  |  |  | ENTROPY 4HS POR DIA |
| 17 | 1.2.2 | Sprint backlog | manual | 2h | 2014-05-26 | 2014-05-27 | 16 |  |  | ENTROPY 4HS POR DIA |
| 18 | 1.2.3 | Realizar investigación de Redes Ad-hoc | manual | 12h | 2014-05-27 | 2014-05-30 |  |  |  |  |
| 19 | 1.2.4 | Realizar investigación de Windows | manual | 12h | 2014-05-30 | 2014-06-03 |  |  |  |  |
| 20 | 1.2.5 | Desarrollar arquitectura base | manual | 8h | 2014-06-02 | 2014-06-04 |  |  |  | ENTROPY 4HS POR DIA |
| 21 | 1.2.6 | Desarrollar artefactos de sprint | manual | 20h | 2014-06-03 | 2014-06-09 |  |  |  | ENTROPY 4HS POR DIA |
| 22 | 1.2.7 | Realizar pruebas unitarias | manual | 8h | 2014-06-09 | 2014-06-11 |  |  |  | ENTROPY 4HS POR DIA |
| 23 | 1.2.8 | Realizar pruebas de integración | manual | 8h | 2014-06-11 | 2014-06-13 | 21, 22 |  |  | ENTROPY 4HS POR DIA |
| 24 | 1.2.9 | Sprint review | manual | 4h | 2014-06-13 | 2014-06-14 | 23 |  |  | ENTROPY 4HS POR DIA |
| 25 | 1.2.10 | Sprint retrospective | manual | 4h | 2014-06-14 | 2014-06-16 | 24 |  |  | ENTROPY 4HS POR DIA |

| ID | WBS | Task | Type | Duration | Start | Finish | Calendar |
| --- | --- | --- | --- | --- | --- | --- | --- |
| 26 | 1.3 | **Sprint 2** |  | 72h | 2014-06-16 | 2014-07-07 | ENTROPY 4HS POR DIA |
| 27 | 1.3.1 | Sprint planning | manual | 0.5d | 2014-06-16 | 2014-06-17 | ENTROPY 4HS POR DIA |
| 28 | 1.3.2 | Sprint backlog | manual | 0.5d | 2014-06-16 | 2014-06-17 | ENTROPY 4HS POR DIA |
| 29 | 1.3.3 | Realizar investigación de Linux | manual | 0.5d? | 2014-06-16 | 2014-06-17 |  |
| 30 | 1.3.4 | Realizar investigación de Testing automático | manual | 0.5d? | 2014-06-16 | 2014-06-17 |  |
| 31 | 1.3.5 | Desarrollar artefactos de sprint | manual | 1d | 2014-06-16 | 2014-06-18 | ENTROPY 4HS POR DIA |
| 32 | 1.3.6 | Realizar pruebas unitarias | manual | 1d | 2014-06-16 | 2014-06-18 | ENTROPY 4HS POR DIA |
| 33 | 1.3.7 | Realizar pruebas de integración | manual | 1d | 2014-06-16 | 2014-06-18 | ENTROPY 4HS POR DIA |
| 34 | 1.3.8 | Sprint review | manual | 1d | 2014-06-16 | 2014-06-18 | ENTROPY 4HS POR DIA |
| 35 | 1.3.9 | Sprint retrospective | manual | 1d | 2014-06-16 | 2014-06-18 | ENTROPY 4HS POR DIA |
| 36 | 1.4 | **Sprint 3** |  | 74h | 2014-07-31 | 2014-08-19 | ENTROPY 4HS POR DIA |
| 37 | 1.4.1 | Sprint planning | manual | 1d | 2014-07-31 | 2014-08-02 | ENTROPY 4HS POR DIA |
| 38 | 1.4.2 | Sprint backlog | manual | 1d | 2014-07-31 | 2014-08-02 | ENTROPY 4HS POR DIA |
| 39 | 1.4.3 | Realizar investigación de Seguridad/Encriptación | manual | 0.5d? | 2014-07-31 | 2014-08-01 |  |
| 40 | 1.4.4 | Desarrollar artefactos de sprint | manual | 1d | 2014-07-31 | 2014-08-02 | ENTROPY 4HS POR DIA |
| 41 | 1.4.5 | Realizar pruebas unitarias | manual | 1d | 2014-07-31 | 2014-08-02 | ENTROPY 4HS POR DIA |
| 42 | 1.4.6 | Realizar pruebas de integración | manual | 1d | 2014-07-31 | 2014-08-02 | ENTROPY 4HS POR DIA |
| 43 | 1.4.7 | Realizar pruebas de regresión | manual | 1d | 2014-07-31 | 2014-08-02 | ENTROPY 4HS POR DIA |
| 44 | 1.4.8 | Sprint review | manual | 1d | 2014-07-31 | 2014-08-02 | ENTROPY 4HS POR DIA |
| 45 | 1.4.9 | Sprint retrospective | manual | 1d | 2014-07-31 | 2014-08-02 | ENTROPY 4HS POR DIA |
| 46 | 1.5 | **Sprint 4** |  | 72h | 2014-08-25 | 2014-09-15 | ENTROPY 4HS POR DIA |
| 47 | 1.5.1 | Sprint planning | manual | 1d | 2014-08-25 | 2014-08-27 | ENTROPY 4HS POR DIA |
| 48 | 1.5.2 | Sprint backlog | manual | 1d | 2014-08-25 | 2014-08-27 | ENTROPY 4HS POR DIA |
| 49 | 1.5.3 | Desarrollar artefactos de sprint | manual | 1d | 2014-08-25 | 2014-08-27 | ENTROPY 4HS POR DIA |
| 50 | 1.5.4 | Realizar pruebas unitarias | manual | 1d | 2014-08-25 | 2014-08-27 | ENTROPY 4HS POR DIA |
| 51 | 1.5.5 | Realizar pruebas de integración | manual | 1d | 2014-08-25 | 2014-08-27 | ENTROPY 4HS POR DIA |
| 52 | 1.5.6 | Sprint review | manual | 1d | 2014-08-25 | 2014-08-27 | ENTROPY 4HS POR DIA |
| 53 | 1.5.7 | Sprint retrospective | manual | 1d | 2014-08-25 | 2014-08-27 | ENTROPY 4HS POR DIA |

| ID | WBS | Task | Type | Duration | Start | Finish | Calendar |
| --- | --- | --- | --- | --- | --- | --- | --- |
| 54 | 1.6 | **Sprint 5** |  | 72h | 2014-09-15 | 2014-10-06 | ENTROPY 4HS POR DIA |
| 55 | 1.6.1 | Sprint planning | manual | 1d | 2014-09-15 | 2014-09-17 | ENTROPY 4HS POR DIA |
| 56 | 1.6.2 | Sprint backlog | manual | 1d | 2014-09-15 | 2014-09-17 | ENTROPY 4HS POR DIA |
| 57 | 1.6.3 | Desarrollar artefactos de sprint | manual | 1d | 2014-09-15 | 2014-09-17 | ENTROPY 4HS POR DIA |
| 58 | 1.6.4 | Realizar pruebas unitarias | manual | 1d | 2014-09-15 | 2014-09-17 | ENTROPY 4HS POR DIA |
| 59 | 1.6.5 | Realizar pruebas de integración | manual | 1d | 2014-09-15 | 2014-09-17 | ENTROPY 4HS POR DIA |
| 60 | 1.6.6 | Sprint review | manual | 1d | 2014-09-15 | 2014-09-17 | ENTROPY 4HS POR DIA |
| 61 | 1.6.7 | Sprint retrospective | manual | 1d | 2014-09-15 | 2014-09-17 | ENTROPY 4HS POR DIA |
| 62 | 1.7 | **Sprint 6** |  | 72h | 2014-10-06 | 2014-10-27 | ENTROPY 4HS POR DIA |
| 63 | 1.7.1 | Sprint planning | manual | 1d | 2014-10-06 | 2014-10-08 | ENTROPY 4HS POR DIA |
| 64 | 1.7.2 | Sprint backlog | manual | 1d | 2014-10-06 | 2014-10-08 | ENTROPY 4HS POR DIA |
| 65 | 1.7.3 | Desarrollar artefactos de sprint | manual | 1d | 2014-10-06 | 2014-10-08 | ENTROPY 4HS POR DIA |
| 66 | 1.7.4 | Realizar pruebas unitarias | manual | 1d | 2014-10-06 | 2014-10-08 | ENTROPY 4HS POR DIA |
| 67 | 1.7.5 | Realizar pruebas de integración | manual | 1d | 2014-10-06 | 2014-10-08 | ENTROPY 4HS POR DIA |
| 68 | 1.7.6 | Realizar pruebas de regresión | manual | 1d | 2014-10-06 | 2014-10-08 | ENTROPY 4HS POR DIA |
| 69 | 1.7.7 | Sprint review | manual | 1d | 2014-10-06 | 2014-10-08 | ENTROPY 4HS POR DIA |
| 70 | 1.7.8 | Sprint retrospective | manual | 1d | 2014-10-06 | 2014-10-08 | ENTROPY 4HS POR DIA |
| 71 | 1.8 | **Sprint 7** |  | 72h | 2014-10-27 | 2014-11-17 | ENTROPY 4HS POR DIA |
| 72 | 1.8.1 | Sprint planning | manual | 1d | 2014-10-27 | 2014-10-29 | ENTROPY 4HS POR DIA |
| 73 | 1.8.2 | Sprint backlog | manual | 1d | 2014-10-27 | 2014-10-29 | ENTROPY 4HS POR DIA |
| 74 | 1.8.3 | Desarrollar artefactos de sprint | manual | 1d | 2014-10-27 | 2014-10-29 | ENTROPY 4HS POR DIA |
| 75 | 1.8.4 | Realizar pruebas unitarias | manual | 1d | 2014-10-27 | 2014-10-29 | ENTROPY 4HS POR DIA |
| 76 | 1.8.5 | Realizar pruebas de integración | manual | 1d | 2014-10-27 | 2014-10-29 | ENTROPY 4HS POR DIA |
| 77 | 1.8.6 | Sprint review | manual | 1d | 2014-10-27 | 2014-10-29 | ENTROPY 4HS POR DIA |
| 78 | 1.8.7 | Sprint retrospective | manual | 1d | 2014-10-27 | 2014-10-29 | ENTROPY 4HS POR DIA |

| ID | WBS | Task | Type | Duration | Start | Finish | Calendar |
| --- | --- | --- | --- | --- | --- | --- | --- |
| 79 | 1.9 | **Sprint 8** |  | 72h | 2014-12-29 | 2015-01-19 | ENTROPY 4HS POR DIA |
| 80 | 1.9.1 | Sprint planning | manual | 1d | 2014-12-29 | 2014-12-31 | ENTROPY 4HS POR DIA |
| 81 | 1.9.2 | Sprint backlog | manual | 1d | 2014-12-29 | 2014-12-31 | ENTROPY 4HS POR DIA |
| 82 | 1.9.3 | Desarrollar artefactos de sprint | manual | 1d | 2014-12-29 | 2014-12-31 | ENTROPY 4HS POR DIA |
| 83 | 1.9.4 | Realizar pruebas unitarias | manual | 1d | 2014-12-29 | 2014-12-31 | ENTROPY 4HS POR DIA |
| 84 | 1.9.5 | Realizar pruebas de integración | manual | 1d | 2014-12-29 | 2014-12-31 | ENTROPY 4HS POR DIA |
| 85 | 1.9.6 | Sprint review | manual | 1d | 2014-12-29 | 2014-12-31 | ENTROPY 4HS POR DIA |
| 86 | 1.9.7 | Sprint retrospective | manual | 1d | 2014-12-29 | 2014-12-31 | ENTROPY 4HS POR DIA |
| 87 | 1.10 | **Sprint 9** |  | 108h | 2015-03-02 | 2015-03-23 | ENTROPY 6HS POR DIA |
| 88 | 1.10.1 | Sprint planning | manual | 1d | 2015-03-02 | 2015-03-04 | ENTROPY 6HS POR DIA |
| 89 | 1.10.2 | Sprint backlog | manual | 1d | 2015-03-02 | 2015-03-04 | ENTROPY 6HS POR DIA |
| 90 | 1.10.3 | Desarrollar artefactos de sprint | manual | 1d | 2015-03-02 | 2015-03-04 | ENTROPY 6HS POR DIA |
| 91 | 1.10.4 | Realizar pruebas unitarias | manual | 1d | 2015-03-02 | 2015-03-04 | ENTROPY 6HS POR DIA |
| 92 | 1.10.5 | Realizar pruebas de integración | manual | 1d | 2015-03-02 | 2015-03-04 | ENTROPY 6HS POR DIA |
| 93 | 1.10.6 | Realizar pruebas de regresión | manual | 1d | 2015-03-02 | 2015-03-04 | ENTROPY 6HS POR DIA |
| 94 | 1.10.7 | Sprint review | manual | 1d | 2015-03-02 | 2015-03-04 | ENTROPY 6HS POR DIA |
| 95 | 1.10.8 | Sprint retrospective | manual | 1d | 2015-03-02 | 2015-03-04 | ENTROPY 6HS POR DIA |
| 96 | 1.11 | **Sprint 10** |  | 108h | 2015-03-23 | 2015-04-13 | ENTROPY 6HS POR DIA |
| 97 | 1.11.1 | Sprint planning | manual | 1d | 2015-03-23 | 2015-03-25 | ENTROPY 6HS POR DIA |
| 98 | 1.11.2 | Sprint backlog | manual | 1d | 2015-03-23 | 2015-03-25 | ENTROPY 6HS POR DIA |
| 99 | 1.11.3 | Desarrollar artefactos de sprint | manual | 1d | 2015-03-23 | 2015-03-25 | ENTROPY 6HS POR DIA |
| 100 | 1.11.4 | Realizar pruebas unitarias | manual | 1d | 2015-03-23 | 2015-03-25 | ENTROPY 6HS POR DIA |
| 101 | 1.11.5 | Realizar pruebas de integración | manual | 1d | 2015-03-23 | 2015-03-25 | ENTROPY 6HS POR DIA |
| 102 | 1.11.6 | Sprint review | manual | 1d | 2015-03-23 | 2015-03-25 | ENTROPY 6HS POR DIA |
| 103 | 1.11.7 | Sprint retrospective | manual | 1d | 2015-03-23 | 2015-03-25 | ENTROPY 6HS POR DIA |

| ID | WBS | Task | Type | Duration | Start | Finish | Calendar |
| --- | --- | --- | --- | --- | --- | --- | --- |
| 104 | 1.12 | **Sprint 11** |  | 108h | 2015-04-13 | 2015-05-04 | ENTROPY 6HS POR DIA |
| 105 | 1.12.1 | Sprint planning | manual | 1d | 2015-04-13 | 2015-04-15 | ENTROPY 6HS POR DIA |
| 106 | 1.12.2 | Sprint backlog | manual | 1d | 2015-04-13 | 2015-04-15 | ENTROPY 6HS POR DIA |
| 107 | 1.12.3 | Desarrollar artefactos de sprint | manual | 1d | 2015-04-13 | 2015-04-15 | ENTROPY 6HS POR DIA |
| 108 | 1.12.4 | Realizar pruebas unitarias | manual | 1d | 2015-04-13 | 2015-04-15 | ENTROPY 6HS POR DIA |
| 109 | 1.12.5 | Realizar pruebas de integración | manual | 1d | 2015-04-13 | 2015-04-15 | ENTROPY 6HS POR DIA |
| 110 | 1.12.6 | Sprint review | manual | 1d | 2015-04-13 | 2015-04-15 | ENTROPY 6HS POR DIA |
| 111 | 1.12.7 | Sprint retrospective | manual | 1d | 2015-04-13 | 2015-04-15 | ENTROPY 6HS POR DIA |
| 112 | 1.13 | **Sprint 12** |  | 108h | 2015-05-04 | 2015-05-25 | ENTROPY 6HS POR DIA |
| 113 | 1.13.1 | Sprint planning | manual | 1d | 2015-05-04 | 2015-05-06 | ENTROPY 6HS POR DIA |
| 114 | 1.13.2 | Sprint backlog | manual | 1d | 2015-05-04 | 2015-05-06 | ENTROPY 6HS POR DIA |
| 115 | 1.13.3 | Desarrollar artefactos de sprint | manual | 1d | 2015-05-04 | 2015-05-06 | ENTROPY 6HS POR DIA |
| 116 | 1.13.4 | Realizar pruebas unitarias | manual | 1d | 2015-05-04 | 2015-05-06 | ENTROPY 6HS POR DIA |
| 117 | 1.13.5 | Realizar pruebas de integración | manual | 1d | 2015-05-04 | 2015-05-06 | ENTROPY 6HS POR DIA |
| 118 | 1.13.6 | Realizar pruebas de regresión | manual | 1d | 2015-05-04 | 2015-05-06 | ENTROPY 6HS POR DIA |
| 119 | 1.13.7 | Sprint review | manual | 1d | 2015-05-04 | 2015-05-06 | ENTROPY 6HS POR DIA |
| 120 | 1.13.8 | Sprint retrospective | manual | 1d | 2015-05-04 | 2015-05-06 | ENTROPY 6HS POR DIA |
| 121 | 1.14 | **Sprint 13** |  | 108h | 2015-05-25 | 2015-06-15 | ENTROPY 6HS POR DIA |
| 122 | 1.14.1 | Sprint planning | manual | 1d | 2015-05-25 | 2015-05-27 | ENTROPY 6HS POR DIA |
| 123 | 1.14.2 | Sprint backlog | manual | 1d | 2015-05-25 | 2015-05-27 | ENTROPY 6HS POR DIA |
| 124 | 1.14.3 | Desarrollar artefactos de sprint | manual | 1d | 2015-05-25 | 2015-05-27 | ENTROPY 6HS POR DIA |
| 125 | 1.14.4 | Realizar pruebas unitarias | manual | 1d | 2015-05-25 | 2015-05-27 | ENTROPY 6HS POR DIA |
| 126 | 1.14.5 | Realizar pruebas de integración | manual | 1d | 2015-05-25 | 2015-05-27 | ENTROPY 6HS POR DIA |
| 127 | 1.14.6 | Sprint review | manual | 1d | 2015-05-25 | 2015-05-27 | ENTROPY 6HS POR DIA |
| 128 | 1.14.7 | Sprint retrospective | manual | 1d | 2015-05-25 | 2015-05-27 | ENTROPY 6HS POR DIA |

| ID | WBS | Task | Type | Duration | Start | Finish | Calendar |
| --- | --- | --- | --- | --- | --- | --- | --- |
| 129 | 1.15 | **Sprint 14** |  | 108h | 2015-06-15 | 2015-07-06 | ENTROPY 6HS POR DIA |
| 130 | 1.15.1 | Sprint planning | manual | 1d | 2015-06-15 | 2015-06-17 | ENTROPY 6HS POR DIA |
| 131 | 1.15.2 | Sprint backlog | manual | 1d | 2015-06-15 | 2015-06-17 | ENTROPY 6HS POR DIA |
| 132 | 1.15.3 | Desarrollar artefactos de sprint | manual | 1d | 2015-06-15 | 2015-06-17 | ENTROPY 6HS POR DIA |
| 133 | 1.15.4 | Realizar pruebas unitarias | manual | 1d | 2015-06-15 | 2015-06-17 | ENTROPY 6HS POR DIA |
| 134 | 1.15.5 | Realizar pruebas de integración | manual | 1d | 2015-06-15 | 2015-06-17 | ENTROPY 6HS POR DIA |
| 135 | 1.15.6 | Sprint review | manual | 1d | 2015-06-15 | 2015-06-17 | ENTROPY 6HS POR DIA |
| 136 | 1.15.7 | Sprint retrospective | manual | 1d | 2015-06-15 | 2015-06-17 | ENTROPY 6HS POR DIA |
| 137 | 1.16 | **Sprint 15** |  | 108h | 2015-07-06 | 2015-07-27 | ENTROPY 6HS POR DIA |
| 138 | 1.16.1 | Sprint planning | manual | 1d | 2015-07-06 | 2015-07-08 | ENTROPY 6HS POR DIA |
| 139 | 1.16.2 | Sprint backlog | manual | 1d | 2015-07-06 | 2015-07-08 | ENTROPY 6HS POR DIA |
| 140 | 1.16.3 | Desarrollar artefactos de sprint | manual | 1d | 2015-07-06 | 2015-07-08 | ENTROPY 6HS POR DIA |
| 141 | 1.16.4 | Realizar pruebas unitarias | manual | 1d | 2015-07-06 | 2015-07-08 | ENTROPY 6HS POR DIA |
| 142 | 1.16.5 | Realizar pruebas de integración | manual | 1d | 2015-07-06 | 2015-07-08 | ENTROPY 6HS POR DIA |
| 143 | 1.16.6 | Realizar pruebas de regresión | manual | 1d | 2015-07-06 | 2015-07-08 | ENTROPY 6HS POR DIA |
| 144 | 1.16.7 | Sprint review | manual | 1d | 2015-07-06 | 2015-07-08 | ENTROPY 6HS POR DIA |
| 145 | 1.16.8 | Sprint retrospective | manual | 1d | 2015-07-06 | 2015-07-08 | ENTROPY 6HS POR DIA |
